# Nhom2QLKS

Schedule from MS Project, 2023-09-20 to 2024-01-05, costs in $.

## Calendars

- Standard: Mon-Fri 08:00-12:00, 13:00-17:00; Sat-Sun off.

## Resources

| Resource | Rate |
| --- | --- |
| LQNhân | 8 |
| NVPhát | 8 |
| PTTính | 8 |
| HNQuí | 10 |
| LKDuy | 8 |

## Schedule

| ID | WBS | Task | Duration | Start | Finish | Predecessors | Baseline start | Baseline finish | Baseline duration | Total slack | Constraint | Resources | Work | Cost | Baseline cost |
| --- | --- | --- | --- | --- | --- | --- | --- | --- | --- | --- | --- | --- | --- | --- | --- |
| 1 | 1 | **Dự án: Xây dựng phần mềm quản lý khách sạn** | 78d? | 2023-09-20 | 2024-01-05 |  | 2023-09-20 | 2023-12-25 | 69d? | 0d |  |  | 1800h | 15,064 | 13,552 |
| 2 | 1.1 | **Quy trình khởi động** | 6d | 2023-09-20 | 2023-09-27 |  | 2023-09-20 | 2023-09-27 | 6d | 0d |  |  | 160h | 1,328 | 1,328 |
| 3 | 1.1.1 | Xác định yêu cầu của khách hàng | 2d | 2023-09-20 | 2023-09-21 |  | 2023-09-20 | 2023-09-21 | 2d | 0d |  | LKDuy; NVPhát | 32h | 256 | 256 |
| 4 | 1.1.2 | Phân tích tính khả thi của dự án | 1d | 2023-09-22 | 2023-09-22 | 3 | 2023-09-22 | 2023-09-22 | 1d | 0d |  | HNQuí; LKDuy; LQNhân; NVPhát; PTTính | 40h | 336 | 336 |
| 5 | 1.1.3 | Chọn người quản lý dự án | 1d | 2023-09-25 | 2023-09-25 | 4 | 2023-09-25 | 2023-09-25 | 1d | 0d |  | HNQuí; LKDuy; LQNhân; NVPhát; PTTính | 40h | 336 | 336 |
| 6 | 1.1.4 | Xác định các bên liên quan | 1d | 2023-09-26 | 2023-09-26 | 5 | 2023-09-26 | 2023-09-26 | 1d | 0d |  | HNQuí; LQNhân | 16h | 144 | 144 |
| 7 | 1.1.5 | Phân tích tài chính | 1d | 2023-09-26 | 2023-09-26 | 6SS | 2023-09-26 | 2023-09-26 | 1d | 0d | start no earlier than 2023-09-26 | LKDuy; NVPhát; PTTính | 24h | 192 | 192 |
| 8 | 1.1.6 | Lập bản tuyên bố dự án | 1d | 2023-09-27 | 2023-09-27 | 7 | 2023-09-27 | 2023-09-27 | 1d | 0d |  | LQNhân | 8h | 64 | 64 |
| 9 | 1.2 | **Quy trình lập kế hoạch** | 8d? | 2023-09-28 | 2023-10-09 | 2 | 2023-09-28 | 2023-10-09 | 8d? | 0d |  |  | 304h | 2,544 | 2,544 |
| 10 | 1.2.1 | Lập hợp đồng nhóm | 1d | 2023-09-28 | 2023-09-28 |  | 2023-09-28 | 2023-09-28 | 1d | 0d |  | LQNhân; HNQuí; LKDuy; NVPhát; PTTính | 40h | 336 | 336 |
| 11 | 1.2.2 | Lập bảng phân tích các bên liên quan | 1d | 2023-09-29 | 2023-09-29 | 10 | 2023-09-29 | 2023-09-29 | 1d | 0d |  | PTTính; HNQuí | 16h | 144 | 144 |
| 12 | 1.2.3 | Lập bản phát biểu về phạm vi | 1d | 2023-09-29 | 2023-09-29 | 11SS | 2023-09-29 | 2023-09-29 | 1d | 0d |  | LKDuy; NVPhát; LQNhân | 24h | 192 | 192 |
| 13 | 1.2.4 | Xác định các tài nguyên của dự án | 1d | 2023-10-02 | 2023-10-02 | 12 | 2023-10-02 | 2023-10-02 | 1d | 0d |  | LKDuy; LQNhân; NVPhát | 24h | 192 | 192 |
| 14 | 1.2.5 | Xây dựng cấu trúc phân rã công việc (WBS) | 1d | 2023-10-03 | 2023-10-03 | 13 | 2023-10-03 | 2023-10-03 | 1d | 0d |  | HNQuí; LKDuy; LQNhân; NVPhát; PTTính | 40h | 336 | 336 |
| 15 | 1.2.6 | Lập lịch biểu (Gantt Chart) | 1d | 2023-10-04 | 2023-10-04 | 14 | 2023-10-04 | 2023-10-04 | 1d | 0d |  | HNQuí; LKDuy; LQNhân; NVPhát; PTTính | 40h | 336 | 336 |
| 16 | 1.2.7 | **Lập kế hoạch quản lý rủi ro** | 3d? | 2023-10-05 | 2023-10-09 | 15 | 2023-10-05 | 2023-10-09 | 3d? | 0d |  |  | 120h | 1,008 | 1,008 |
| 17 | 1.2.7.1 | Xác định rủi ro | 1d? | 2023-10-05 | 2023-10-05 |  | 2023-10-05 | 2023-10-05 | 1d? | 0d |  | HNQuí; LKDuy; LQNhân; NVPhát; PTTính | 40h | 336 | 336 |
| 18 | 1.2.7.2 | Phân tích định tính các rủi ro | 1d? | 2023-10-06 | 2023-10-06 | 17 | 2023-10-06 | 2023-10-06 | 1d? | 0d |  | HNQuí; LKDuy; LQNhân; NVPhát; PTTính | 40h | 336 | 336 |
| 19 | 1.2.7.3 | Xác định cách khắc phục các rủi ro | 1d? | 2023-10-09 | 2023-10-09 | 18 | 2023-10-09 | 2023-10-09 | 1d? | 0d |  | HNQuí; LKDuy; LQNhân; NVPhát; PTTính | 40h | 336 | 336 |
| 20 | 1.3 | **Quy trình thực hiện** | 54d? | 2023-10-10 | 2023-12-22 | 9 | 2023-10-10 | 2023-12-20 | 52d? | 0d |  |  | 1136h | 9,520 | 9,072 |
| 21 | 1.3.1 | **Xác định và phân tích yêu cầu** | 12d | 2023-10-10 | 2023-10-25 |  | 2023-10-10 | 2023-10-25 | 12d | 0d |  |  | 352h | 2,944 | 2,944 |
| 22 | 1.3.1.1 | Khảo sát hiện trạng | 2d | 2023-10-10 | 2023-10-11 |  | 2023-10-10 | 2023-10-11 | 2d | 0d |  | LQNhân; NVPhát | 32h | 256 | 256 |
| 23 | 1.3.1.2 | Lập danh sách các yêu cầu phần mềm | 1d | 2023-10-12 | 2023-10-12 | 22 | 2023-10-12 | 2023-10-12 | 1d | 0d |  | HNQuí; LKDuy; LQNhân; NVPhát; PTTính | 40h | 336 | 336 |
| 24 | 1.3.1.3 | Lập danh sách các chức năng | 1d | 2023-10-13 | 2023-10-13 | 23 | 2023-10-13 | 2023-10-13 | 1d | 0d |  | HNQuí; LKDuy; LQNhân; NVPhát; PTTính | 40h | 336 | 336 |
| 25 | 1.3.1.4 | Vẽ sơ đồ usecase | 2d | 2023-10-16 | 2023-10-17 | 24 | 2023-10-16 | 2023-10-17 | 2d | 0d |  | LKDuy; LQNhân | 32h | 256 | 256 |
| 26 | 1.3.1.5 | Đặc tả và vẽ activity diagram các usecase | 2d | 2023-10-18 | 2023-10-19 | 25 | 2023-10-18 | 2023-10-19 | 2d | 0d |  | HNQuí; NVPhát; PTTính | 48h | 416 | 416 |
| 27 | 1.3.1.6 | Vẽ sơ đồ tuần tự các usecase | 2d | 2023-10-20 | 2023-10-23 | 26 | 2023-10-20 | 2023-10-23 | 2d | 0d |  | HNQuí; LKDuy; LQNhân; NVPhát; PTTính | 80h | 672 | 672 |
| 28 | 1.3.1.7 | Xác định các đối tượng và vẽ sơ đồ class | 2d | 2023-10-24 | 2023-10-25 | 27 | 2023-10-24 | 2023-10-25 | 2d | 0d |  | HNQuí; LKDuy; LQNhân; NVPhát; PTTính | 80h | 672 | 672 |

| ID | WBS | Task | Duration | Start | Finish | Predecessors | Baseline start | Baseline finish | Baseline duration | Total slack | Free slack | Resources | Work | Cost | Baseline cost |
| --- | --- | --- | --- | --- | --- | --- | --- | --- | --- | --- | --- | --- | --- | --- | --- |
| 29 | 1.3.2 | **Thiết kế hệ thống** | 2d? | 2023-10-26 | 2023-10-27 | 21 | 2023-10-26 | 2023-10-27 | 2d? | 0d |  |  | 32h | 272 | 272 |
| 30 | 1.3.2.1 | Chọn kiến trúc hệ thống | 1d? | 2023-10-26 | 2023-10-26 |  | 2023-10-26 | 2023-10-26 | 1d? | 0d |  | NVPhát; HNQuí | 16h | 144 | 144 |
| 31 | 1.3.2.2 | Phân tích kiến trúc hệ thống | 1d? | 2023-10-27 | 2023-10-27 | 30 | 2023-10-27 | 2023-10-27 | 1d? | 0d |  | PTTính; LQNhân | 16h | 128 | 128 |
| 32 | 1.3.3 | Thiết kế dữ liệu | 2d | 2023-10-30 | 2023-10-31 | 29 | 2023-10-30 | 2023-10-30 | 1d? | 0d |  | HNQuí; LKDuy; LQNhân; NVPhát; PTTính | 80h | 672 | 336 |
| 33 | 1.3.4 | **Thiết kế giao diện** | 2d? | 2023-11-01 | 2023-11-02 | 32 | 2023-10-31 | 2023-11-01 | 2d? | 0d |  |  | 80h | 672 | 672 |
| 34 | 1.3.4.1 | Thiết kế giao diện quản lý loại phòng | 1d | 2023-11-01 | 2023-11-01 |  | 2023-10-31 | 2023-10-31 | 1d | 0d |  | LQNhân | 8h | 64 | 64 |
| 35 | 1.3.4.2 | Thiết kế giao diện quản lý phòng | 1d | 2023-11-01 | 2023-11-01 | 34SS | 2023-10-31 | 2023-10-31 | 1d | 0d |  | PTTính | 8h | 64 | 64 |
| 36 | 1.3.4.3 | Thiết kế giao diện quản lý phiếu thuê | 1d | 2023-11-01 | 2023-11-01 | 35SS | 2023-10-31 | 2023-10-31 | 1d | 0d |  | NVPhát | 8h | 64 | 64 |
| 37 | 1.3.4.4 | Thiết kế giao diện tra cứu danh mục phòng | 1d | 2023-11-01 | 2023-11-01 | 36SS | 2023-10-31 | 2023-10-31 | 1d | 0d |  | HNQuí | 8h | 80 | 80 |
| 38 | 1.3.4.5 | Thiết kế giao diện quản lý loại khách | 1d | 2023-11-01 | 2023-11-01 | 37SS | 2023-10-31 | 2023-10-31 | 1d | 0d |  | LKDuy | 8h | 64 | 64 |
| 39 | 1.3.4.6 | Thiết kế giao diện thanh toán | 1d? | 2023-11-02 | 2023-11-02 | 38 | 2023-11-01 | 2023-11-01 | 1d? | 0d |  | HNQuí | 8h | 80 | 80 |
| 40 | 1.3.4.7 | Thiết kế giao diện lịch sử thanh toán, trả phòng | 1d? | 2023-11-02 | 2023-11-02 | 39SS | 2023-11-01 | 2023-11-01 | 1d? | 0d |  | NVPhát | 8h | 64 | 64 |
| 41 | 1.3.4.8 | Thiết kế giao diện thống kê, báo cáo | 1d? | 2023-11-02 | 2023-11-02 | 40SS | 2023-11-01 | 2023-11-01 | 1d? | 0d |  | PTTính | 8h | 64 | 64 |
| 42 | 1.3.4.9 | Thiết kế giao diện thay đổi quy định | 1d? | 2023-11-02 | 2023-11-02 | 41SS | 2023-11-01 | 2023-11-01 | 1d? | 0d |  | LQNhân | 8h | 64 | 64 |
| 43 | 1.3.4.10 | Thiết kế giao diện trang giúp đỡ | 1d? | 2023-11-02 | 2023-11-02 | 42SS | 2023-11-01 | 2023-11-01 | 1d? | 0d |  | LKDuy | 8h | 64 | 64 |
| 44 | 1.3.5 | **Cài đặt** | 24d? | 2023-11-03 | 2023-12-06 | 33 | 2023-11-02 | 2023-12-04 | 23d? | 0d |  |  | 336h | 2,832 | 2,720 |
| 45 | 1.3.5.1 | Cài đặt cơ sở dữ liệu | 1d? | 2023-11-03 | 2023-11-03 |  | 2023-11-02 | 2023-11-02 | 1d? | 0d |  | NVPhát | 8h | 64 | 64 |
| 46 | 1.3.5.2 | **Lập trình giao diện** | 5d? | 2023-11-06 | 2023-11-10 | 45 | 2023-11-03 | 2023-11-09 | 5d? | 0d |  |  | 152h | 1,280 | 1,232 |
| 47 | 1.3.5.2.1 | Lập trình giao diện quản lý loại phòng | 2d | 2023-11-06 | 2023-11-07 |  | 2023-11-03 | 2023-11-06 | 2d | 0d |  | LQNhân | 16h | 128 | 128 |
| 48 | 1.3.5.2.2 | Lập trình giao diện quản lý phòng | 2d | 2023-11-06 | 2023-11-07 | 47SS | 2023-11-03 | 2023-11-06 | 2d | 1d | 0d | PTTính | 16h | 128 | 128 |
| 49 | 1.3.5.2.3 | Lập trình giao diện quản lý phiếu thuê | 3d | 2023-11-06 | 2023-11-08 | 47SS | 2023-11-03 | 2023-11-07 | 3d | 0d |  | NVPhát | 24h | 192 | 192 |
| 50 | 1.3.5.2.4 | Lập trình giao diện tra cứu danh mục phòng | 3d | 2023-11-06 | 2023-11-08 | 47SS | 2023-11-03 | 2023-11-07 | 3d | 1d | 0d | HNQuí | 24h | 240 | 240 |
| 51 | 1.3.5.2.5 | Lập trình giao diện quản lý loại khách | 2d | 2023-11-06 | 2023-11-07 | 47SS | 2023-11-03 | 2023-11-06 | 2d | 2d | 0d | LKDuy | 16h | 128 | 128 |
| 52 | 1.3.5.2.6 | Lập trình giao diện thanh toán | 1d | 2023-11-09 | 2023-11-09 | 50 |  |  |  | 1d |  | HNQuí | 8h | 80 |  |
| 53 | 1.3.5.2.7 | Lập trình giao diện lịch sử thanh toán, trả phòng | 2d | 2023-11-09 | 2023-11-10 | 49 | 2023-11-08 | 2023-11-09 | 2d | 0d |  | NVPhát | 16h | 128 | 160 |
| 54 | 1.3.5.2.8 | Lập trình giao diện thống kê, báo cáo | 2d | 2023-11-08 | 2023-11-09 | 48 | 2023-11-07 | 2023-11-08 | 2d | 1d |  | PTTính | 16h | 128 | 128 |
| 55 | 1.3.5.2.9 | Lập trình giao diện thay đổi quy định | 1d | 2023-11-08 | 2023-11-08 | 47 | 2023-11-07 | 2023-11-07 | 1d | 2d |  | LQNhân | 8h | 64 | 64 |
| 56 | 1.3.5.2.10 | Lập trình giao diện trang giúp đỡ | 1d? | 2023-11-08 | 2023-11-08 | 51 | 2023-11-07 | 2023-11-07 | 1d? | 2d |  | LKDuy | 8h | 64 | 64 |

| ID | WBS | Task | Duration | Start | Finish | Predecessors | Baseline start | Baseline finish | Baseline duration | Total slack | Resources | Work | Cost | Baseline cost |
| --- | --- | --- | --- | --- | --- | --- | --- | --- | --- | --- | --- | --- | --- | --- |
| 57 | 1.3.5.3 | **Lập trình chức năng** | 18d | 2023-11-13 | 2023-12-06 | 46 | 2023-11-10 | 2023-12-04 | 17d | 0d |  | 176h | 1,488 | 1,424 |
| 58 | 1.3.5.3.1 | Lập trình chức năng quản lý loại phòng | 3d | 2023-11-13 | 2023-11-15 |  | 2023-11-10 | 2023-11-14 | 3d | 0d | LQNhân | 24h | 192 | 192 |
| 59 | 1.3.5.3.2 | Lập trình chức năng quản lý phòng | 3d | 2023-11-16 | 2023-11-20 | 58 | 2023-11-15 | 2023-11-17 | 3d | 0d | PTTính | 24h | 192 | 192 |
| 60 | 1.3.5.3.3 | Lập trình chức năng thay đổi quy định | 1d | 2023-11-16 | 2023-11-16 | 58 | 2023-11-15 | 2023-11-15 | 1d | 2d | LQNhân | 8h | 64 | 64 |
| 61 | 1.3.5.3.4 | Lập trình chức năng quản lý loại khách | 3d | 2023-11-13 | 2023-11-15 | 58SS | 2023-11-10 | 2023-11-14 | 3d | 3d | LKDuy | 24h | 192 | 192 |
| 62 | 1.3.5.3.5 | Lập trình chức năng quản lý phiếu thuê | 4d | 2023-11-21 | 2023-11-24 | 60, 59, 61 | 2023-11-20 | 2023-11-23 | 4d | 0d | NVPhát | 32h | 256 | 256 |
| 63 | 1.3.5.3.6 | Lập trình chức năng tra cứu danh mục phòng | 3d | 2023-11-27 | 2023-11-29 | 62 | 2023-11-24 | 2023-11-28 | 3d | 0d | HNQuí | 24h | 240 | 240 |
| 64 | 1.3.5.3.7 | Lập trình chức năng thanh toán | 2d | 2023-11-30 | 2023-12-01 | 63 | 2023-11-29 | 2023-11-30 | 2d | 0d | HNQuí | 16h | 160 | 160 |
| 65 | 1.3.5.3.8 | Lập trình chức năng xem lịch sử thanh toán, trả phòng | 1d | 2023-12-04 | 2023-12-04 | 64 |  |  |  | 0d | NVPhát | 8h | 64 |  |
| 66 | 1.3.5.3.9 | Lập trình chức năng thống kê, báo cáo | 2d | 2023-12-05 | 2023-12-06 | 65 | 2023-12-01 | 2023-12-04 | 2d | 0d | LQNhân | 16h | 128 | 128 |
| 67 | 1.3.6 | **Kiểm thử** | 8d | 2023-12-07 | 2023-12-18 | 44 | 2023-12-05 | 2023-12-14 | 8d | 0d |  | 192h | 1,600 | 1,600 |
| 68 | 1.3.6.1 | Kiểm thử đơn vị | 2d | 2023-12-07 | 2023-12-08 |  | 2023-12-05 | 2023-12-06 | 2d | 0d | HNQuí; LKDuy; LQNhân | 48h | 416 | 416 |
| 69 | 1.3.6.2 | Kiểm thử tích hợp | 2d | 2023-12-11 | 2023-12-12 | 68 | 2023-12-07 | 2023-12-08 | 2d | 0d | LKDuy; LQNhân; NVPhát | 48h | 384 | 384 |
| 70 | 1.3.6.3 | Kiểm thử hệ thống | 2d | 2023-12-13 | 2023-12-14 | 69 | 2023-12-11 | 2023-12-12 | 2d | 0d | LQNhân; NVPhát; PTTính | 48h | 384 | 384 |
| 71 | 1.3.6.4 | Kiểm thử chấp nhận | 2d | 2023-12-15 | 2023-12-18 | 70 | 2023-12-13 | 2023-12-14 | 2d | 0d | HNQuí; LKDuy; PTTính | 48h | 416 | 416 |
| 72 | 1.3.7 | **Triển khai** | 4d? | 2023-12-19 | 2023-12-22 | 67 | 2023-12-15 | 2023-12-20 | 4d? | 0d |  | 64h | 528 | 528 |
| 73 | 1.3.7.1 | Viết tài liệu hướng dẫn | 2d | 2023-12-19 | 2023-12-20 |  | 2023-12-15 | 2023-12-18 | 2d | 0d | LKDuy; LQNhân | 32h | 256 | 256 |
| 74 | 1.3.7.2 | Triển khai sản phẩm cho khách hàng | 1d? | 2023-12-21 | 2023-12-21 | 73 | 2023-12-19 | 2023-12-19 | 1d? | 0d | HNQuí; NVPhát | 16h | 144 | 144 |
| 75 | 1.3.7.3 | Viết tài liệu chuyển giao sản phẩm | 1d | 2023-12-22 | 2023-12-22 | 74 | 2023-12-20 | 2023-12-20 | 1d | 0d | LQNhân; PTTính | 16h | 128 | 128 |
| 76 | 1.4 | **Quy trình điều khiển và kiểm soát** | 8d? | 2023-12-25 | 2024-01-03 | 20 | 2023-12-21 | 2023-12-21 | 1d? | 0d |  | 160h | 1,336 | 272 |
| 77 | 1.4.1 | Cập nhật bản phát biểu về phạm vi | 1d? | 2023-12-25 | 2023-12-25 |  | 2023-12-21 | 2023-12-21 | 1d? | 0d | NVPhát | 8h | 64 | 64 |
| 78 | 1.4.2 | Cập nhật lịch biểu (Gantt Chart) | 1d | 2023-12-25 | 2023-12-25 | 77SS | 2023-12-21 | 2023-12-21 | 1d | 0d | HNQuí | 8h | 80 | 80 |
| 79 | 1.4.3 | Cập nhật danh mục các rủi ro | 1d? | 2023-12-25 | 2023-12-25 | 78SS | 2023-12-21 | 2023-12-21 | 1d? | 0d | LQNhân | 8h | 64 | 64 |
| 80 | 1.4.4 | Lập báo cáo tiến độ | 1d? | 2023-12-25 | 2023-12-25 | 79SS | 2023-12-21 | 2023-12-21 | 1d? | 0d | PTTính | 8h | 64 | 64 |

| ID | WBS | Task | Duration | Start | Finish | Predecessors | Baseline start | Baseline finish | Baseline duration | Total slack | Resources | Work | Cost | Baseline cost |
| --- | --- | --- | --- | --- | --- | --- | --- | --- | --- | --- | --- | --- | --- | --- |
| 81 | 1.4.5 | **Thu thập yêu cầu** | 2d? | 2023-12-26 | 2023-12-27 | 80 |  |  |  | 0d |  | 16h | 128 |  |
| 82 | 1.4.5.1 | Ghi nhận bổ sung các tính năng mới | 1d? | 2023-12-26 | 2023-12-26 |  |  |  |  | 0d | LKDuy | 8h | 64 |  |
| 83 | 1.4.5.2 | Phân tích các yêu cầu của các tính năng | 1d? | 2023-12-27 | 2023-12-27 | 82 |  |  |  | 0d | NVPhát | 8h | 64 |  |
| 84 | 1.4.6 | **Thiết kế** | 1d? | 2023-12-28 | 2023-12-28 | 81 |  |  |  | 0d |  | 16h | 144 |  |
| 85 | 1.4.6.1 | Thiết kế dữ liệu | 1d? | 2023-12-28 | 2023-12-28 |  |  |  |  | 0d | LQNhân | 8h | 64 |  |
| 86 | 1.4.6.2 | Thiết kế giao diện quản lý tiện nghi | 1d? | 2023-12-28 | 2023-12-28 | 85SS |  |  |  | 0d | HNQuí | 8h | 80 |  |
| 87 | 1.4.7 | **Cài đặt** | 1d? | 2023-12-29 | 2023-12-29 | 84 |  |  |  | 0d |  | 24h | 192 |  |
| 88 | 1.4.7.1 | Cài đặt cơ sở dữ liệu | 1d? | 2023-12-29 | 2023-12-29 |  |  |  |  | 0d | NVPhát | 8h | 64 |  |
| 89 | 1.4.7.2 | Lập trình giao diện quản lý tiện nghi | 1d? | 2023-12-29 | 2023-12-29 | 88SS |  |  |  | 0d | PTTính | 8h | 64 |  |
| 90 | 1.4.7.3 | Lập trình chức năng quản lý tiện nghi | 1d? | 2023-12-29 | 2023-12-29 | 89SS |  |  |  | 0d | LKDuy | 8h | 64 |  |
| 91 | 1.4.8 | **Kiểm thử** | 1d | 2024-01-01 | 2024-01-01 | 87 |  |  |  | 0d |  | 24h | 200 |  |
| 92 | 1.4.8.1 | Kiểm thử đơn vị | 2h | 2024-01-01 | 2024-01-01 |  |  |  |  | 0d | HNQuí; LKDuy; LQNhân | 6h | 52 |  |
| 93 | 1.4.8.2 | Kiểm thử tích hợp | 2h | 2024-01-01 | 2024-01-01 | 92 |  |  |  | 0d | LKDuy; LQNhân; NVPhát | 6h | 48 |  |
| 94 | 1.4.8.3 | Kiểm thử hệ thống | 2h | 2024-01-01 | 2024-01-01 | 93 |  |  |  | 0d | LQNhân; NVPhát; PTTính | 6h | 48 |  |
| 95 | 1.4.8.4 | Kiểm thử chấp nhận | 2h | 2024-01-01 | 2024-01-01 | 94 |  |  |  | 0d | HNQuí; LKDuy; PTTính | 6h | 52 |  |
| 96 | 1.4.9 | **Triển khai** | 2d? | 2024-01-02 | 2024-01-03 | 91 |  |  |  | 0d |  | 48h | 400 |  |
| 97 | 1.4.9.1 | Viết tài liệu hướng dẫn | 1d? | 2024-01-02 | 2024-01-02 |  |  |  |  | 0d | LKDuy; LQNhân | 16h | 128 |  |
| 98 | 1.4.9.2 | Triển khai sản phẩm cho khách hàng | 1d? | 2024-01-03 | 2024-01-03 | 97 |  |  |  | 0d | HNQuí; NVPhát | 16h | 144 |  |
| 99 | 1.4.9.3 | Viết tài liệu chuyển giao sản phẩm | 1d? | 2024-01-03 | 2024-01-03 | 98SS |  |  |  | 0d | LQNhân; PTTính | 16h | 128 |  |
| 100 | 1.5 | **Quy trình kết thúc** | 2d? | 2024-01-04 | 2024-01-05 | 76 | 2023-12-22 | 2023-12-25 | 2d? | 0d |  | 40h | 336 | 336 |
| 101 | 1.5.1 | Lập báo cáo về bài học kinh nghiệm | 1d? | 2024-01-04 | 2024-01-04 |  | 2023-12-22 | 2023-12-22 | 1d? | 0d | LKDuy; LQNhân | 16h | 128 | 128 |
| 102 | 1.5.2 | Lập báo cáo kết thúc dự án | 1d? | 2024-01-05 | 2024-01-05 | 101 | 2023-12-25 | 2023-12-25 | 1d? | 0d | HNQuí; NVPhát; PTTính | 24h | 208 | 208 |
